# Unilever DL4 - Projetos_Cronograma R01

Schedule from MS Project, 2025-03-27 to 2025-07-02.

## Calendars

- Padrão: Mon-Fri 09:00-12:00, 13:00-18:00; Sat-Sun off.

## Resources

| Resource |
| --- |
| Gabriel |
| Matheus |
| PROJETISTA A |

## Schedule

| ID | WBS | Task | Type | Duration | Start | Finish | Predecessors | Total slack | Free slack | Resources | Work |
| --- | --- | --- | --- | --- | --- | --- | --- | --- | --- | --- | --- |
| 1 | 1 | **6952 - PROJ PROJETO LINHA 04-ELÉTRICA** |  | 69.38d | 2025-03-27 | 2025-07-02 |  | 0d |  |  | 456h |
| 2 | 1.1 | **MARCOS DE PROJETO** |  | 0d | 2025-03-27 | 2025-03-27 |  |  |  |  |  |
| 3 | 1.1.1 | LIBERAÇÃO P&ID | milestone, manual | 0d | 2025-03-27 | 2025-03-27 |  |  |  |  |  |
| 4 | 1.1.2 | LIBERAÇÃO MAQUETE | milestone, manual | 0d | 2025-03-28 | 2025-03-28 |  |  |  |  |  |
| 5 | 1.1.3 | LIBERAÇÃO CARGAS MCC-11 | milestone, manual | 0d | 2025-03-27 | 2025-03-27 |  |  |  |  |  |
| 6 | 1.1.4 | LIBERAÇÃO CARGAS MCC-10 | milestone, manual | 0d | 2025-03-27 | 2025-03-27 |  |  |  |  |  |
| 9 | 1.2 | **FASE 1 (PARADA JULHO)** |  | 50d | 2025-03-28 | 2025-06-05 |  | 0d |  |  | 456h |
| 10 | 1.2.1 | **PROJETO DE FORÇA (TANK FARM)** |  | 9d | 2025-03-28 | 2025-04-09 |  | 20d |  |  | 72h |
| 11 | 1.2.1.1 | LANÇAMENTO DE PONTOS |  | 2d | 2025-03-28 | 2025-03-31 | 4 | 20d | 0d | Gabriel | 16h |
| 12 | 1.2.1.2 | DESENHO INFRAESTRUTURA |  | 4d | 2025-04-01 | 2025-04-04 | 11 | 20d | 0d | Gabriel | 32h |
| 13 | 1.2.1.3 | ROTEAMENTO DIMENSIONAMENTO |  | 1d | 2025-04-07 | 2025-04-07 | 12 | 20d | 0d | Gabriel | 8h |
| 14 | 1.2.1.4 | DOCUMENTAÇÃO |  | 2d | 2025-04-08 | 2025-04-09 | 13 | 20d | 0d | Gabriel | 16h |
| 15 | 1.2.2 | **PROJETO DE INSTRUMENTAÇÃO (TANK FARM)** |  | 27d | 2025-03-28 | 2025-05-05 |  | 0d |  |  | 112h |
| 16 | 1.2.2.1 | LANÇAMENTO DE PONTOS |  | 4d | 2025-03-28 | 2025-04-02 | 4 | 0d |  | Matheus | 32h |
| 17 | 1.2.2.2 | DESENHO INFRAESTRUTURA |  | 4d | 2025-04-03 | 2025-04-17 | 16 | 0d |  | Matheus | 32h |
| 18 | 1.2.2.3 | ROTEAMENTO DIMENSIONAMENTO |  | 4d | 2025-04-18 | 2025-05-01 | 17 | 0d |  | Matheus | 32h |
| 19 | 1.2.2.4 | DOCUMENTAÇÃO |  | 2d | 2025-05-02 | 2025-05-05 | 18 | 0d |  | Matheus | 16h |
| 20 | 1.2.3 | **PROJETO DE FORÇA (PROCESSO)** |  | 7d | 2025-04-10 | 2025-04-18 |  | 20d |  |  | 56h |
| 21 | 1.2.3.1 | LANÇAMENTO DE PONTOS |  | 1d | 2025-04-10 | 2025-04-10 | 14 | 20d | 0d | Gabriel | 8h |
| 22 | 1.2.3.2 | DESENHO INFRAESTRUTURA |  | 3d | 2025-04-11 | 2025-04-15 | 21 | 20d | 0d | Gabriel | 24h |
| 23 | 1.2.3.3 | ROTEAMENTO DIMENSIONAMENTO |  | 1d | 2025-04-16 | 2025-04-16 | 22 | 20d | 0d | Gabriel | 8h |
| 24 | 1.2.3.4 | DOCUMENTAÇÃO |  | 2d | 2025-04-17 | 2025-04-18 | 23 | 20d | 0d | Gabriel | 16h |
| 25 | 1.2.4 | **PROJETO DE INSTRUMENTAÇÃO (PROCESSO)** |  | 11d | 2025-05-06 | 2025-05-20 |  | 0d |  |  | 88h |
| 26 | 1.2.4.1 | LANÇAMENTO DE PONTOS |  | 4d | 2025-05-06 | 2025-05-09 | 19 | 0d |  | Matheus | 32h |
| 27 | 1.2.4.2 | DESENHO INFRAESTRUTURA |  | 4d | 2025-05-12 | 2025-05-15 | 26 | 0d |  | Matheus | 32h |
| 28 | 1.2.4.3 | ROTEAMENTO DIMENSIONAMENTO |  | 1d | 2025-05-16 | 2025-05-16 | 27 | 0d |  | Matheus | 8h |
| 29 | 1.2.4.4 | DOCUMENTAÇÃO |  | 2d | 2025-05-19 | 2025-05-20 | 28 | 0d |  | Matheus | 16h |

| ID | WBS | Task | Duration | Start | Finish | Predecessors | Total slack | Free slack | Resources | Work |
| --- | --- | --- | --- | --- | --- | --- | --- | --- | --- | --- |
| 30 | 1.2.5 | **PROJETO DE FORÇA PACKING** | 2d | 2025-04-21 | 2025-04-22 |  | 20d |  |  | 16h |
| 31 | 1.2.5.1 | LANÇAMENTO DE PONTOS | 0.5d | 2025-04-21 | 2025-04-21 | 24 | 20d | 0d | Gabriel | 4h |
| 32 | 1.2.5.2 | DESENHO INFRAESTRUTURA | 0.5d | 2025-04-21 | 2025-04-21 | 31 | 20d | 0d | Gabriel | 4h |
| 33 | 1.2.5.3 | ROTEAMENTO DIMENSIONAMENTO | 0.5d | 2025-04-22 | 2025-04-22 | 32 | 20d | 0d | Gabriel | 4h |
| 34 | 1.2.5.4 | DOCUMENTAÇÃO | 0.5d | 2025-04-22 | 2025-04-22 | 33 | 20d |  | Gabriel | 4h |
| 35 | 1.2.6 | **LISTAS DE MATERIAL** | 1d | 2025-05-21 | 2025-05-21 |  | 0d |  |  | 16h |
| 36 | 1.2.6.1 | LEVANTAMENTO ITENS DE FORÇA | 0.5d | 2025-05-21 | 2025-05-21 | 34, 29 | 0d |  | Gabriel | 4h |
| 37 | 1.2.6.2 | LEVANTAMENTO ITENS DE INSTRUMENTAÇÃO | 0.5d | 2025-05-21 | 2025-05-21 | 29, 19 | 0d |  | Matheus | 4h |
| 38 | 1.2.6.3 | CONSOLIDAÇÃO | 0.5d | 2025-05-21 | 2025-05-21 | 36, 37 | 0d |  | Gabriel; Matheus | 8h |
| 39 | 1.2.7 | **LISTA DE IOs** | 4d | 2025-05-22 | 2025-05-27 |  | 7d |  |  | 32h |
| 40 | 1.2.7.1 | CONSOLIDAÇÃO P&ID | 2d | 2025-05-22 | 2025-05-23 | 3, 19, 29 | 7d | 0d | Matheus | 16h |
| 41 | 1.2.7.2 | PREENCHIMENTO LISTA | 2d | 2025-05-26 | 2025-05-27 | 40 | 7d |  | Matheus | 16h |
| 42 | 1.2.8 | **MODELAGEM VOLUMETRIA .rvt** | 11d | 2025-05-21 | 2025-06-05 |  | 0d |  |  | 64h |
| 43 | 1.2.8.1 | INFRAESTRUTURA FORÇA | 4d | 2025-05-21 | 2025-05-27 | 38 | 0d |  | Gabriel; Matheus | 32h |
| 44 | 1.2.8.2 | INFRAESTRUTURA INSTRUMENTAÇÃO | 4d | 2025-05-28 | 2025-06-05 | 43 | 0d |  | Gabriel; Matheus | 32h |
| 46 | 1.3 | **FASE 2 (LINHA 04)** | 19d | 2025-06-06 | 2025-07-02 |  | 0d |  |  |  |
| 47 | 1.3.1 | **REVISÃO PROJETO ILUMANÇÃO E TOMADAS** | 12d | 2025-06-06 | 2025-06-23 |  | 0d |  |  |  |
| 48 | 1.3.1.1 | COMPATIBILIZAÇÃO LAYOUT | 3d | 2025-06-06 | 2025-06-10 | 9 | 0d |  |  |  |
| 49 | 1.3.1.2 | REVISÃO ALOCAÇÃO PONTOS DE ALIMENTAÇÃO | 5d | 2025-06-11 | 2025-06-17 | 48 | 0d |  |  |  |
| 50 | 1.3.1.3 | ROTEAMENTO DIMENSSIONAMENTO | 2d | 2025-06-18 | 2025-06-19 | 49 | 0d |  |  |  |
| 51 | 1.3.1.4 | DOCUMENTAÇÃO | 2d | 2025-06-20 | 2025-06-23 | 50 | 0d |  |  |  |
| 52 | 1.3.2 | **PROJETO DE FORÇA** | 10d | 2025-06-06 | 2025-06-19 |  | 2d |  |  |  |
| 53 | 1.3.2.1 | LANÇAMENTO DE PONTOS | 3d | 2025-06-06 | 2025-06-10 | 9 | 2d | 0d |  |  |
| 54 | 1.3.2.2 | DESENHO INFRAESTRUTURA | 3d | 2025-06-11 | 2025-06-13 | 53 | 2d | 0d |  |  |
| 55 | 1.3.2.3 | ROTEAMENTO DIMENSIONAMENTO | 2d | 2025-06-16 | 2025-06-17 | 54 | 2d | 0d |  |  |
| 56 | 1.3.2.4 | DOCUMENTAÇÃO | 2d | 2025-06-18 | 2025-06-19 | 55 | 2d | 0d |  |  |

| ID | WBS | Task | Duration | Start | Finish | Predecessors | Total slack |
| --- | --- | --- | --- | --- | --- | --- | --- |
| 57 | 1.3.3 | **PROJETO INSTRUMENTAÇÃO** | 12d | 2025-06-06 | 2025-06-23 |  | 0d |
| 58 | 1.3.3.1 | LANÇAMENTO DE PONTOS | 3d | 2025-06-06 | 2025-06-10 | 9 | 0d |
| 59 | 1.3.3.2 | DESENHO INFRAESTRUTURA | 5d | 2025-06-11 | 2025-06-17 | 58 | 0d |
| 60 | 1.3.3.3 | ROTEAMENTO DIMENSIONAMENTO | 2d | 2025-06-18 | 2025-06-19 | 59 | 0d |
| 61 | 1.3.3.4 | DOCUMENTAÇÃO | 2d | 2025-06-20 | 2025-06-23 | 60 | 0d |
| 62 | 1.3.4 | **LISTAS DE MATERIAL** | 4d | 2025-06-20 | 2025-06-25 |  | 0d |
| 63 | 1.3.4.1 | LEVANTAMENTO ITENS DE ILUMINAÇÃO E TOMADAS | 1d | 2025-06-24 | 2025-06-24 | 51 | 0d |
| 64 | 1.3.4.2 | LEVANTAMENTO ITENS DE FORÇA | 1d | 2025-06-20 | 2025-06-20 | 56 | 2d |
| 65 | 1.3.4.3 | LEVANTAMENTO ITENS DE INSTRUMENTAÇÃO | 1d | 2025-06-24 | 2025-06-24 | 61 | 0d |
| 66 | 1.3.4.4 | CONSOLIDAÇÃO | 1d | 2025-06-25 | 2025-06-25 | 63, 64, 65 | 0d |
| 67 | 1.3.5 | **MODELAGEM VOLUMETRIA .rvt** | 5d | 2025-06-26 | 2025-07-02 |  | 0d |
| 68 | 1.3.5.1 | INFRAESTRUTURA ILUMINAÇÃO E TOMADAS | 5d | 2025-06-26 | 2025-07-02 | 66 | 0d |
| 69 | 1.3.5.2 | INFRAESTRUTURA FORÇA | 5d | 2025-06-26 | 2025-07-02 | 66 | 0d |
| 70 | 1.3.5.3 | INFRAESTRUTURA INSTRUMENTAÇÃO | 5d | 2025-06-26 | 2025-07-02 | 66 | 0d |
